# project QCM

Schedule from MS Project, 2015-10-10 to 2016-06-25, 2 hours a day, costs in €, A marks actual dates.
Centre de formation CCI de la Mayenne

## Calendars

- Standard: Mon-Fri 09:00-12:00, 14:00-18:00; Sat-Sun off.
- CDSM: Mon-Thu 18:00-20:00; Fri off; Sat-Sun 09:00-12:00. Exceptions (off unless hours are given): 2016-01-09 to 2016-01-10 (Déménagement).

## Resources

| Resource | Rate |
| --- | --- |
| Godart Jeoffrey | 64.28 |

## Schedule

| ID | WBS | Task | Duration | Start | Finish | Predecessors | Complete | Remaining | Total slack | Free slack | Calendar | Resources | Work | Actual work | Cost | Actual cost |
| --- | --- | --- | --- | --- | --- | --- | --- | --- | --- | --- | --- | --- | --- | --- | --- | --- |
| 1 | 1 | **Rédaction** | 66.75d | 2015-10-10 A | 2015-12-14 |  | 20% | 53.5d | 0d |  | CDSM |  | 133.5h | 26.5h | 8,581.38 | 1,703.42 |
| 2 | 1.1 | Création du cahier des charges générales | 3.5d | 2015-10-10 A | 2015-10-12 A |  | 100% |  |  |  | CDSM | Godart Jeoffrey | 7h | 7h | 449.96 | 449.96 |
| 3 | 1.2 | Rédactions des spécifications générales | 15d | 2015-10-12 A | 2015-10-27 | 2 | 65% | 5.25d | 0d |  | CDSM | Godart Jeoffrey | 30h | 19.5h | 1,928.4 | 1,253.46 |
| 4 | 1.3 | Rédaction des spécifications détaillées - Administrations | 33.25d | 2015-10-27 | 2015-11-29 | 3 |  |  | 0d |  | CDSM | Godart Jeoffrey | 66.5h |  | 4,274.62 |  |
| 5 | 1.4 | Rédaction des spécifications détaillées - Application Mobile | 15d | 2015-11-29 | 2015-12-14 | 4 |  |  | 0d |  | CDSM | Godart Jeoffrey | 30h |  | 1,928.4 |  |
| 6 | 2 | **Développement** | 155d | 2015-12-14 | 2016-05-21 |  |  |  | 15.75d |  | CDSM |  | 310h |  | 19,926.8 |  |
| 7 | 2.1 | Développement Application - Android | 35d | 2015-12-14 | 2016-01-21 | 5 |  |  | 135.75d | 318.5d | CDSM | Godart Jeoffrey | 70h |  | 4,499.6 |  |
| 8 | 2.2 | Développement Application Ios | 35d | 2016-01-21 | 2016-02-25 | 5 |  |  | 100.75d |  | CDSM | Godart Jeoffrey | 70h |  | 4,499.6 |  |
| 9 | 2.3 | Développement Application Mobile Windows Phone | 35d | 2016-02-25 | 2016-03-31 | 5 |  |  | 65.75d |  | CDSM | Godart Jeoffrey | 70h |  | 4,499.6 |  |
| 10 | 2.4 | Développement Administration | 50d | 2016-03-31 | 2016-05-21 | 4 |  |  | 6.25d | 17.5d | CDSM | Godart Jeoffrey | 100h |  | 6,428 |  |
| 11 | 3 | **Test** | 35d | 2016-05-21 | 2016-06-25 |  |  |  | 0d |  | CDSM |  | 70h |  | 4,499.6 |  |
| 12 | 3.1 | Environement de Test | 7d | 2016-05-21 | 2016-05-28 | 5, 4 |  |  | 0d |  | CDSM | Godart Jeoffrey | 14h |  | 899.92 |  |
| 13 | 3.2 | test Fonction applicative | 8.75d | 2016-05-28 | 2016-06-05 | 7, 8, 9, 12 |  |  | 8.75d |  | CDSM | Godart Jeoffrey | 17.5h |  | 1,124.9 |  |
| 14 | 3.3 | test back Office | 8.75d | 2016-06-05 | 2016-06-14 | 10, 12 |  |  | 0d |  | CDSM | Godart Jeoffrey | 17.5h |  | 1,124.9 |  |
| 15 | 3.4 | Environement de production et déploiement | 10.5d | 2016-06-14 | 2016-06-25 | 13, 14, 12 |  |  | 0d |  | CDSM | Godart Jeoffrey | 21h |  | 1,349.88 |  |
